# EPMS三期开发计划

Schedule from MS Project, 2020-01-02 to 2020-06-30, A marks actual dates.
www.edong.net.cn

## Calendars

- 标准: Mon-Sat 08:30-12:00, 13:30-18:00; Sun off. Exceptions (off unless hours are given): 2020-01-21 to 2020-01-31 (春节), 2020-04-04 to 2020-04-06 (清明), 2020-05-01 to 2020-05-05 (劳动节).

## Resources

| Resource |
| --- |
| 项目经理 |
| 技术经理 |
| 开发人员 |
| 测试人员 |
| PS |
| 公司领导 |
| 数据库管理员 |
| 美工 |
| 周中贵 |
| 付传家 |

## Schedule

| ID | WBS | Task | Duration | Start | Finish | Predecessors | Complete | Remaining | Total slack | Free slack | Constraint | Resources | Work | Actual work |
| --- | --- | --- | --- | --- | --- | --- | --- | --- | --- | --- | --- | --- | --- | --- |
| 1 | 1 | **得益乳业-投递app项目** | 138.94d | 2020-01-02 A | 2020-06-30 |  | 3% | 134.24d | 0d |  |  |  | 488h | 71.2h |
| 2 | 1.1 | **项目前期准备工作** | 7.94d | 2020-01-02 A | 2020-01-10 |  | 86% | 1.13d |  |  |  |  | 32h | 28h |
| 3 | 1.1.1 | 项目进场 | 0.5d | 2020-01-02 A | 2020-01-02 A |  | 100% |  |  |  |  | 周中贵; 付传家 | 8h | 8h |
| 4 | 1.1.2 | 启动会ppt编写 | 0.5d | 2020-01-02 A | 2020-01-02 A |  | 100% |  |  |  |  | 周中贵 | 4h | 4h |
| 5 | 1.1.3 | 项目章程编写 | 1d | 2020-01-03 A | 2020-01-03 A | 4 | 100% |  |  |  |  | 周中贵 | 8h | 8h |
| 6 | 1.1.4 | 项目主计划编写 | 1d | 2020-01-04 A | 2020-01-04 A |  | 100% |  |  |  | start no earlier than 2020-01-03 | 周中贵 | 8h | 8h |
| 7 | 1.1.5 | 项目启动会召开 | 0.5d | 2020-01-09 | 2020-01-09 |  |  |  | 132.44d |  | start no earlier than 2020-01-09 | 周中贵 | 4h |  |
| 8 | 1.2 | **需求分析** | 29.94d | 2020-01-06 A | 2020-02-20 |  | 15% | 25.45d |  |  |  |  | 456h | 43.2h |
| 9 | 1.2.1 | **需求整理业务调研** | 12.94d | 2020-01-06 A | 2020-01-20 |  | 42% | 7.5d |  |  |  |  | 40h | 16.8h |
| 10 | 1.2.1.1 | 周期订小程序需求整理 | 1.5d | 2020-01-06 A | 2020-01-07 |  | 90% | 0.15d | 1.3d | 0.5d | start no earlier than 2020-01-06 | 周中贵 | 12h | 10.8h |
| 11 | 1.2.1.2 | 投递app需求整理 | 1.5d | 2020-01-08 A | 2020-01-09 | 10 | 50% | 0.75d | 131.44d | 0d |  | 周中贵 | 12h | 6h |
| 12 | 1.2.1.3 | 后台辅助功能需求整理 | 1d | 2020-01-09 | 2020-01-10 | 11 |  |  | 131.44d |  | start no earlier than 2020-01-09 | 周中贵 | 8h |  |
| 13 | 1.2.1.4 | 业务部门调研-益家订新零售 | 1d | 2020-01-10 | 2020-01-10 |  |  |  | 130.94d |  | start no earlier than 2020-01-10 | 周中贵 | 8h |  |
| 14 | 1.2.2 | **第三方系统调研** | 3.5d | 2020-01-11 | 2020-01-15 |  |  |  | 127.44d |  |  |  | 16h |  |
| 15 | 1.2.2.1 | 主数据调研 | 0.5d | 2020-01-11 | 2020-01-11 |  |  |  | 130.44d |  | start no earlier than 2020-01-11 | 周中贵 | 4h |  |
| 16 | 1.2.2.2 | BPM调研 | 0.5d | 2020-01-11 | 2020-01-11 |  |  |  | 130.44d |  | start no earlier than 2020-01-11 | 周中贵 | 4h |  |
| 17 | 1.2.2.3 | 迁徙调研 | 0.5d | 2020-01-15 | 2020-01-15 |  |  |  | 127.44d |  | start no earlier than 2020-01-15 | 周中贵 | 4h |  |
| 18 | 1.2.2.4 | 博智营销中台调研 | 0.5d | 2020-01-15 | 2020-01-15 |  |  |  | 127.44d |  | start no earlier than 2020-01-15 | 周中贵 | 4h |  |
| 19 | 1.2.3 | **蓝图编写** | 12.94d | 2020-01-06 A | 2020-01-20 |  | 25% | 9.65d |  |  |  |  | 144h | 26.4h |
| 20 | 1.2.3.1 | 小程序原型绘制 | 2d | 2020-01-06 A | 2020-01-07 |  | 90% | 0.2d | 1.5d | 0d |  | 付传家 | 16h | 14.4h |
| 21 | 1.2.3.2 | 投递app原型绘制 | 3d | 2020-01-08 A | 2020-01-10 | 20 | 50% | 1.5d | 122.94d | 0d |  | 付传家 | 24h | 12h |
| 22 | 1.2.3.3 | 后台管理原型绘制 | 3d | 2020-01-11 | 2020-01-14 | 21 |  |  | 122.94d | 0d |  | 付传家 | 24h |  |
| 23 | 1.2.3.4 | 会议讨论、原型修订 | 5d | 2020-01-15 | 2020-01-20 | 22 |  |  | 122.94d |  |  | 周中贵; 付传家 | 80h |  |
| 24 | 1.2.4 | **需求评审** | 13.06d | 2020-02-03 | 2020-02-17 |  |  |  |  |  |  |  | 256h |  |
| 25 | 1.2.4.1 | 蓝图文档编写 | 7d | 2020-02-03 | 2020-02-10 |  |  |  | 105.94d | 0d |  | 周中贵; 付传家 | 112h |  |
| 26 | 1.2.4.2 | 蓝图确认签字 | 9d | 2020-02-11 | 2020-02-20 | 25 |  |  | 105.94d |  |  | 周中贵; 付传家 | 144h |  |

Notes:
- 4: 得益乳业-投递app项目开发进度V1.0.mpp
- 5: 得益乳业-项目实施管理章程V1.0.docx
- 7: 得益乳业-项目启动会_普元v1.0.ppt

| ID | WBS | Task | Type | Duration | Start | Finish | Predecessors | Total slack | Free slack | Constraint |
| --- | --- | --- | --- | --- | --- | --- | --- | --- | --- | --- |
| 27 | 1.3 | **系统设计** |  | 23.94d | 2020-02-03 | 2020-02-29 |  |  |  |  |
| 28 | 1.3.1 | 概要设计 |  | 6d | 2020-02-03 | 2020-02-08 |  | 115.94d |  | start no earlier than 2020-02-03 |
| 29 | 1.3.2 | 数据库设计 |  | 8d | 2020-02-11 | 2020-02-19 |  | 106.94d |  | start no earlier than 2020-02-11 |
| 30 | 1.3.3 | 接口设计 |  | 6d | 2020-02-19 | 2020-02-25 |  | 101.94d |  | start no earlier than 2020-02-19 |
| 31 | 1.3.4 | 系统设计评审 | milestone | 5d | 2020-02-25 | 2020-02-29 |  | 97.94d |  | start no earlier than 2020-02-25 |
| 32 | 1.4 | **系统开发与测试** |  | 75d | 2020-02-01 | 2020-04-30 |  |  |  |  |
| 33 | 1.4.1 | 小程序开发 |  | 20d | 2020-02-01 | 2020-02-24 |  | 102.94d |  |  |
| 34 | 1.4.2 | 投递app开发 |  | 32d | 2020-02-24 | 2020-03-31 |  | 71.94d |  | start no earlier than 2020-02-24 |
| 35 | 1.4.3 | 后台管理开发 |  | 50d | 2020-02-01 | 2020-03-30 |  | 72.94d |  |  |
| 36 | 1.4.4 | 模块单元测试 |  | 24d | 2020-04-01 | 2020-04-30 |  | 47.94d |  | start no earlier than 2020-04-01 |
| 37 | 1.5 | **系统集成测试** |  | 22d | 2020-05-06 | 2020-05-30 |  |  |  |  |
| 38 | 1.5.1 | 测试环境准备 |  | 2d | 2020-05-06 | 2020-05-07 |  | 29.94d | 4d |  |
| 39 | 1.5.2 | 接口测试 |  | 5d | 2020-05-07 | 2020-05-12 |  | 41.94d |  | start no earlier than 2020-05-07 |
| 40 | 1.5.3 | UAT测试 |  | 10d | 2020-05-13 | 2020-05-23 | 38 | 25.94d | 0d | start no earlier than 2020-05-13 |
| 41 | 1.5.4 | 压力测试 |  | 5d | 2020-05-25 | 2020-05-29 | 40 | 25.94d | 0d |  |
| 42 | 1.5.5 | 编写测试报告 |  | 1d | 2020-05-30 | 2020-05-30 | 41 | 25.94d |  |  |
| 43 | 1.6 | **系统上线** |  | 6.94d | 2020-05-23 | 2020-05-30 |  |  |  |  |
| 44 | 1.6.1 | 上线环境准备 |  | 3d | 2020-05-23 | 2020-05-26 |  | 29.94d |  | start no earlier than 2020-05-23 |
| 45 | 1.6.2 | 系统培训 |  | 3d | 2020-05-23 | 2020-05-26 |  | 26.94d | 0d |  |
| 46 | 1.6.3 | 系统上线 |  | 3d | 2020-05-27 | 2020-05-29 | 45 | 26.94d |  |  |
| 47 | 1.7 | **系统试运行** |  | 26d | 2020-06-01 | 2020-06-30 |  |  |  |  |
| 48 | 1.7.1 | 试运行跟踪 |  | 26d | 2020-05-30 | 2020-06-30 |  | 0.06d |  | finish no earlier than 2020-06-30 |
