# EPMS三期开发计划

Schedule from MS Project, 2020-01-02 to 2020-06-30, A marks actual dates.
www.edong.net.cn

## Calendars

- 标准: Mon-Sat 08:30-12:00, 13:30-18:00; Sun off. Exceptions (off unless hours are given): 2020-01-21 to 2020-01-31 (春节), 2020-04-04 to 2020-04-06 (清明), 2020-05-01 to 2020-05-05 (劳动节).

## Resources

| Resource |
| --- |
| 项目经理 |
| 技术经理 |
| 开发人员 |
| 测试人员 |
| PS |
| 公司领导 |
| 数据库管理员 |
| 美工 |
| 周中贵 |
| 付传家 |
| 付传家（） |
| 陈康 |
| 孟祥瑞 |
| 郭翠玲 |
| 孟凡喜 |
| 侯圣昌 |
| 傅胤龙 |

## Schedule

| ID | WBS | Task | Duration | Start | Finish | Predecessors | Complete | Remaining | Actual finish | Total slack | Free slack | Constraint | Resources | Work | Actual work |
| --- | --- | --- | --- | --- | --- | --- | --- | --- | --- | --- | --- | --- | --- | --- | --- |
| 1 | 1 | **得益乳业-投递app项目** | 138.94d? | 2020-01-02 A | 2020-06-30 |  | 13% | 120.75d? |  | 0d |  |  |  | 670.4h | 232h |
| 2 | 1.1 | **项目前期准备工作** | 7.94d | 2020-01-02 A | 2020-01-10 |  | 100% |  | 2020-01-09 |  |  |  |  | 32h | 32h |
| 3 | 1.1.1 | 项目进场 | 0.5d | 2020-01-02 A | 2020-01-02 A |  | 100% |  |  |  |  |  | 周中贵; 付传家 | 8h | 8h |
| 4 | 1.1.2 | 启动会ppt编写 | 0.5d | 2020-01-02 A | 2020-01-02 A |  | 100% |  |  |  |  |  | 周中贵 | 4h | 4h |
| 5 | 1.1.3 | 项目章程编写 | 1d | 2020-01-03 A | 2020-01-03 A | 4 | 100% |  |  |  |  |  | 周中贵 | 8h | 8h |
| 6 | 1.1.4 | 项目主计划编写 | 1d | 2020-01-04 A | 2020-01-04 A |  | 100% |  |  |  |  | start no earlier than 2020-01-03 | 周中贵 | 8h | 8h |
| 7 | 1.1.5 | 项目启动会召开 | 0.5d | 2020-01-09 A | 2020-01-09 A |  | 100% |  |  |  |  | start no earlier than 2020-01-09 | 周中贵 | 4h | 4h |
| 8 | 1.2 | **需求分析** | 29.94d | 2020-01-06 A | 2020-02-20 |  | 63% | 11.23d |  |  |  |  |  | 266.4h | 200h |
| 9 | 1.2.1 | **需求整理业务调研** | 12.94d | 2020-01-06 A | 2020-01-20 |  | 100% |  | 2020-01-10 |  |  |  |  | 40h | 40h |
| 10 | 1.2.1.1 | 周期订小程序需求整理 | 1.5d | 2020-01-06 A | 2020-01-07 A |  | 100% |  |  |  |  | start no earlier than 2020-01-06 | 周中贵 | 12h | 12h |
| 11 | 1.2.1.2 | 投递app需求整理 | 1.5d | 2020-01-08 A | 2020-01-09 A | 10 | 100% |  |  |  |  |  | 周中贵 | 12h | 12h |
| 12 | 1.2.1.3 | 后台辅助功能需求整理 | 1d | 2020-01-09 A | 2020-01-10 A | 11 | 100% |  |  |  |  | start no earlier than 2020-01-09 | 周中贵 | 8h | 8h |
| 13 | 1.2.1.4 | 业务部门调研-益家订新零售 | 1d | 2020-01-10 A | 2020-01-10 A |  | 100% |  |  |  |  | start no earlier than 2020-01-10 | 周中贵 | 8h | 8h |
| 14 | 1.2.2 | **第三方系统调研** | 3.5d | 2020-01-11 A | 2020-01-15 A |  | 100% |  |  |  |  |  |  | 16h | 16h |
| 15 | 1.2.2.1 | 主数据调研 | 0.5d | 2020-01-11 A | 2020-01-11 A |  | 100% |  |  |  |  | start no earlier than 2020-01-11 | 周中贵 | 4h | 4h |
| 16 | 1.2.2.2 | BPM调研 | 0.5d | 2020-01-11 A | 2020-01-11 A |  | 100% |  |  |  |  | start no earlier than 2020-01-11 | 周中贵 | 4h | 4h |
| 17 | 1.2.2.3 | 迁徙调研 | 0.5d | 2020-01-15 A | 2020-01-15 A |  | 100% |  |  |  |  | start no earlier than 2020-01-15 | 周中贵 | 4h | 4h |
| 18 | 1.2.2.4 | 博智营销中台调研 | 0.5d | 2020-01-15 A | 2020-01-15 A |  | 100% |  |  |  |  | start no earlier than 2020-01-15 | 周中贵 | 4h | 4h |
| 19 | 1.2.3 | **需求调研** | 12.94d | 2020-01-06 A | 2020-01-20 A |  | 100% |  |  |  |  |  |  | 144h | 144h |
| 20 | 1.2.3.1 | 小程序原型绘制 | 2d | 2020-01-06 A | 2020-01-07 A |  | 100% |  |  |  |  |  | 付传家 | 16h | 16h |
| 21 | 1.2.3.2 | 投递app原型绘制 | 3d | 2020-01-08 A | 2020-01-10 A | 20 | 100% |  |  |  |  |  | 付传家 | 24h | 24h |
| 22 | 1.2.3.3 | 后台管理原型绘制 | 3d | 2020-01-11 A | 2020-01-14 A | 21 | 100% |  |  |  |  |  | 付传家 | 24h | 24h |
| 23 | 1.2.3.4 | 会议讨论、原型修订 | 5d | 2020-01-15 A | 2020-01-20 A | 22 | 100% |  |  |  |  |  | 周中贵; 付传家 | 80h | 80h |
| 24 | 1.2.4 | **蓝图编写** | 13.06d | 2020-02-03 | 2020-02-17 |  |  |  |  |  |  |  |  | 66.4h |  |
| 25 | 1.2.4.1 | 小程序蓝图编写 | 1d | 2020-02-03 | 2020-02-03 |  |  |  |  | 116.94d | 0d |  | 付传家 [80%]; 周中贵 [20%] | 5.6h |  |
| 26 | 1.2.4.2 | 投递app蓝图编写 | 2d | 2020-02-04 | 2020-02-05 | 25 |  |  |  | 116.94d | 0d |  | 付传家 [80%]; 周中贵 [20%] | 16h |  |
| 27 | 1.2.4.3 | 投递后台蓝图编写 | 2d | 2020-02-05 | 2020-02-06 |  |  |  |  | 117.94d |  | start no earlier than 2020-02-05 | 付传家 [80%]; 周中贵 [20%] | 16h |  |
| 28 | 1.2.4.4 | 文档整合及修订 | 2d | 2020-02-06 | 2020-02-07 | 26 |  |  |  | 116.94d |  |  | 付传家 [80%]; 周中贵 [20%] | 16h |  |
| 29 | 1.2.4.5 | 蓝图业务确认签字 | 5d | 2020-02-10 | 2020-02-14 |  |  |  |  | 110.94d |  | start no earlier than 2020-02-10 | 付传家 [20%]; 周中贵 [80%] | 12.8h |  |

Notes:
- 4: 得益乳业-投递app项目开发进度V1.0.mpp
- 5: 得益乳业-项目实施管理章程V1.0.docx
- 7: 得益乳业-项目启动会_普元v1.0.ppt

| ID | WBS | Task | Type | Duration | Start | Finish | Predecessors | Total slack | Free slack | Constraint | Resources | Work |
| --- | --- | --- | --- | --- | --- | --- | --- | --- | --- | --- | --- | --- |
| 30 | 1.3 | **系统设计** |  | 23.94d | 2020-02-03 | 2020-02-29 |  |  |  |  |  | 340h |
| 31 | 1.3.1 | 需求解读 |  | 1d | 2020-02-03 | 2020-02-03 |  | 116.94d | 0d |  | 周中贵 [20%]; 孟祥瑞; 陈康 | 17.6h |
| 32 | 1.3.2 | 前端UI设计 |  | 5d | 2020-02-03 | 2020-02-07 |  | 116.94d |  |  | 郭翠玲; 傅胤龙 | 80h |
| 33 | 1.3.3 | 概要设计编写 |  | 4d | 2020-02-04 | 2020-02-07 |  | 116.94d |  | start no earlier than 2020-02-04 | 周中贵 [80%]; 付传家 [20%] | 18.4h |
| 34 | 1.3.4 | 数据库设计编写 |  | 10d | 2020-02-04 | 2020-02-14 | 31 | 110.94d |  |  | 孟祥瑞 [80%]; 周中贵 [20%] | 32h |
| 35 | 1.3.5 | 接口文档设计编写 |  | 10d | 2020-02-04 | 2020-02-14 |  | 110.94d |  | start no earlier than 2020-02-04 | 陈康 [80%]; 周中贵 [20%] | 32h |
| 36 | 1.3.6 | 系统设计评审 | milestone | 5d | 2020-02-17 | 2020-02-21 |  | 104.94d |  | start no earlier than 2020-02-17 | 周中贵; 付传家; 孟凡喜; 侯圣昌 | 160h |
| 37 | 1.4 | **系统开发与测试** |  | 83.94d | 2020-02-03 | 2020-05-16 |  |  |  |  |  |  |
| 38 | 1.4.1 | **前端页面开发** |  | 1d? | 2020-02-03 | 2020-02-03 |  | 120.94d |  |  |  |  |
| 39 | 1.4.1.1 | 小程序页面开发 |  | 1d? | 2020-02-03 | 2020-02-03 |  | 120.94d |  |  |  |  |
| 40 | 1.4.1.2 | 投递app页面开发 |  | 1d? | 2020-02-03 | 2020-02-03 |  | 120.94d |  |  |  |  |
| 41 | 1.4.2 | 第三方接口开发 |  | 1d? | 2020-02-03 | 2020-02-03 |  | 120.94d |  |  |  |  |
| 42 | 1.4.3 | 后端功能开发 |  | 20d | 2020-02-03 | 2020-02-25 |  | 101.94d |  |  |  |  |
| 43 | 1.4.4 | 集成测试 |  | 24d | 2020-04-01 | 2020-04-30 |  | 47.94d |  | start no earlier than 2020-04-01 |  |  |
| 44 | 1.5 | **系统集成测试** |  | 22d | 2020-05-06 | 2020-05-30 |  |  |  |  |  |  |
| 45 | 1.5.1 | 测试环境准备 |  | 2d | 2020-05-06 | 2020-05-07 |  | 29.94d | 4d |  |  |  |
| 46 | 1.5.2 | 接口测试 |  | 5d | 2020-05-07 | 2020-05-12 |  | 41.94d |  | start no earlier than 2020-05-07 |  |  |
| 47 | 1.5.3 | UAT测试 |  | 10d | 2020-05-13 | 2020-05-23 | 45 | 25.94d | 0d | start no earlier than 2020-05-13 |  |  |
| 48 | 1.5.4 | 压力测试 |  | 5d | 2020-05-25 | 2020-05-29 | 47 | 25.94d | 0d |  |  |  |
| 49 | 1.5.5 | 编写测试报告 |  | 1d | 2020-05-30 | 2020-05-30 | 48 | 25.94d |  |  |  |  |
| 50 | 1.6 | **系统上线** |  | 6.94d | 2020-05-23 | 2020-05-30 |  |  |  |  |  |  |
| 51 | 1.6.1 | 上线环境准备 |  | 3d | 2020-05-23 | 2020-05-26 |  | 29.94d |  | start no earlier than 2020-05-23 |  |  |
| 52 | 1.6.2 | 系统培训 |  | 3d | 2020-05-23 | 2020-05-26 |  | 26.94d | 0d |  |  |  |
| 53 | 1.6.3 | 系统上线 |  | 3d | 2020-05-27 | 2020-05-29 | 52 | 26.94d |  |  |  |  |

| ID | WBS | Task | Duration | Start | Finish | Total slack | Constraint | Resources | Work |
| --- | --- | --- | --- | --- | --- | --- | --- | --- | --- |
| 54 | 1.7 | **系统试运行** | 26d | 2020-06-01 | 2020-06-30 |  |  |  |  |
| 55 | 1.7.1 | 试运行跟踪 | 26d | 2020-05-30 | 2020-06-30 | 0.06d | finish no earlier than 2020-06-30 |  |  |
| 56 | 1.8 | **待确认问题汇总** | 10d | 2020-02-03 | 2020-02-13 |  |  |  | 32h |
| 57 | 1.8.1 | 网络域名申请 | 1d? | 2020-02-03 | 2020-02-03 | 120.94d |  | 周中贵 | 8h |
| 58 | 1.8.2 | 投递员调研问题反馈 | 1d? | 2020-02-03 | 2020-02-03 | 120.94d |  | 周中贵 | 8h |
| 59 | 1.8.3 | pos机对接技术讨论 | 1d? | 2020-02-03 | 2020-02-03 | 120.94d |  | 孟凡喜 | 8h |
| 60 | 1.8.4 | ios企业开发账号申请 | 1d? | 2020-02-03 | 2020-02-03 | 120.94d |  | 周中贵 | 8h |
